# WBS.xml

Schedule from MS Project XML, 2018-02-22 to 2018-08-23, 6 hours a day, costs in IRR, A marks actual dates.

## Calendars

- Standard: Mon-Sun 09:00-12:00, 14:00-17:00. Exceptions (off unless hours are given): 2018-03-11 to 2018-03-24 (New year rest), 2018-04-14 to 2018-04-21 (ACM), 2018-04-22 09:00-12:00, 14:00-17:00, 2018-04-23 08:00-12:00, 13:00-17:00, 2018-04-28 08:00-12:00, 13:00-17:00.

## Resources

| Resource | Rate |
| --- | --- |
| امیرکیوان محتشمی | 613000 |
| پیمان جبارزاده گنجه | 550000 |

## Schedule

| ID | WBS | Task | Type | Duration | Start | Finish | Predecessors | Complete | Constraint | Resources | Work | Actual work | Cost | Actual cost |
| --- | --- | --- | --- | --- | --- | --- | --- | --- | --- | --- | --- | --- | --- | --- |
| 1 | 1 | **فاز اول پروژه** |  | 11.33d | 2018-02-22 09:00 A | 2018-03-05 11:00 A |  | 100% |  |  | 22.68h | 22.68h | 13,203,625 | 13,203,625 |
| 2 | 1.1 | **تهیه پروپوزال** |  | 11.17d | 2018-02-22 09:00 A | 2018-03-05 10:00 A |  | 100% |  |  | 22.03h | 22.03h | 12,846,125 | 12,846,125 |
| 3 | 1.1.1 | اهداف و توجیه |  | 2h | 2018-03-04 09:00 A | 2018-03-04 11:00 A |  | 100% | start no earlier than 2018-03-04 08:00 | پیمان جبارزاده گنجه [65%] | 1.3h | 1.3h | 715,000 | 715,000 |
| 4 | 1.1.2 | معرفی و مفاد قرارداد |  | 3h | 2018-03-04 09:00 A | 2018-03-04 12:00 A |  | 100% | start no earlier than 2018-03-04 08:00 | امیرکیوان محتشمی [75%] | 2.25h | 2.25h | 1,379,250 | 1,379,250 |
| 5 | 1.1.3 | **معرفی سیستم و توضیح تکنولوژی** |  | 0.67d | 2018-02-27 09:00 A | 2018-02-27 15:00 A |  | 100% |  |  | 4.85h | 4.85h | 2,809,250 | 2,809,250 |
| 6 | 1.1.3.1 | تهیه گزینه راه حل‌های تکنولوژی |  | 4h | 2018-02-27 09:00 A | 2018-02-27 15:00 A |  | 100% | start no earlier than 2018-02-27 08:00 | پیمان جبارزاده گنجه [65%] | 2.6h | 2.6h | 1,430,000 | 1,430,000 |
| 7 | 1.1.3.2 | امکان سنجی گزینه ها |  | 3h | 2018-02-27 09:00 A | 2018-02-27 12:00 A | 6SS | 100% |  | امیرکیوان محتشمی [75%] | 2.25h | 2.25h | 1,379,250 | 1,379,250 |
| 8 | 1.1.3.3 | انتخاب گزینه راه حل نهایی | milestone | 0h | 2018-02-27 15:00 A | 2018-02-27 15:00 A | 7, 6 | 100% |  | امیرکیوان محتشمی [75%] |  |  |  |  |
| 9 | 1.1.4 | **پوشش نیازمندی‌های کارکردی و غیرکارکردی** |  | 0.83d | 2018-02-22 09:00 A | 2018-02-22 16:00 A |  | 100% |  |  | 8.4h | 8.4h | 4,903,500 | 4,903,500 |
| 10 | 1.1.4.1 | نیازمندی‌های کارکردی |  | 5h | 2018-02-22 09:00 A | 2018-02-22 16:00 A |  | 100% | start no earlier than 2018-02-22 08:00 | امیرکیوان محتشمی [75%]; پیمان جبارزاده گنجه [65%] | 7h | 7h | 4,086,250 | 4,086,250 |
| 11 | 1.1.4.2 | نیازمندی‌های غیرکارکردی |  | 1h | 2018-02-22 09:00 A | 2018-02-22 10:00 A |  | 100% | start no earlier than 2018-02-22 08:00 | امیرکیوان محتشمی [75%]; پیمان جبارزاده گنجه [65%] | 1.4h | 1.4h | 817,250 | 817,250 |
| 12 | 1.1.5 | برآورد زمانی |  | 2h | 2018-03-04 09:00 A | 2018-03-04 11:00 A |  | 100% | start no earlier than 2018-03-04 08:00 | امیرکیوان محتشمی [75%] | 1.5h | 1.5h | 919,500 | 919,500 |
| 13 | 1.1.6 | برآوردمالی |  | 4h | 2018-03-04 11:00 A | 2018-03-04 17:00 A | 12 | 100% |  | پیمان جبارزاده گنجه [65%] | 2.6h | 2.6h | 1,430,000 | 1,430,000 |
| 14 | 1.1.7 | مراحل اجرای پروژه |  | 1h | 2018-03-05 09:00 A | 2018-03-05 10:00 A | 12, 13 | 100% |  | امیرکیوان محتشمی [75%] | 0.75h | 0.75h | 459,750 | 459,750 |
| 15 | 1.1.8 | معرفی اعضای گروه | milestone | 0h | 2018-03-04 08:00 A | 2018-03-04 08:00 A |  | 100% | start no earlier than 2018-03-04 08:00 | امیرکیوان محتشمی [75%] |  |  |  |  |
| 16 | 1.1.9 | بیان نمرات اضافی |  | 0.5h | 2018-03-04 09:00 A | 2018-03-04 09:30 A | 15 | 100% |  | امیرکیوان محتشمی [75%] | 0.38h | 0.38h | 229,875 | 229,875 |
| 17 | 1.2 | بازخوانی و تصحیح پروپوزال و آماده سازی نسخه نهایی |  | 1h | 2018-03-05 10:00 A | 2018-03-05 11:00 A | 2 | 100% |  | پیمان جبارزاده گنجه [65%] | 0.65h | 0.65h | 357,500 | 357,500 |
| 18 | 1.3 | ارسال نسخه نهایی | milestone | 0d | 2018-03-05 11:00 A | 2018-03-05 11:00 A | 17 | 100% |  | پیمان جبارزاده گنجه [65%] |  |  |  |  |
| 19 | 2 | **فاز دوم پروژه** |  | 0.25d | 2018-03-10 08:00 A | 2018-03-10 10:30 A | 1 | 100% |  |  | 5.6h | 5.6h | 3,269,000 | 3,269,000 |
| 20 | 2.1 | **تهیه ساختار شکست کار اولیه** |  | 0.25d | 2018-03-10 08:00 A | 2018-03-10 10:30 A |  | 100% |  |  | 5.6h | 5.6h | 3,269,000 | 3,269,000 |
| 21 | 2.1.1 | فاز اول |  | 1.5h | 2018-03-10 09:00 A | 2018-03-10 10:30 A |  | 100% | start no earlier than 2018-03-10 08:00 | امیرکیوان محتشمی [75%]; پیمان جبارزاده گنجه [65%] | 2.1h | 2.1h | 1,225,875 | 1,225,875 |
| 22 | 2.1.2 | فاز دوم | milestone | 0h | 2018-03-10 08:00 A | 2018-03-10 08:00 A |  | 100% | start no earlier than 2018-03-10 08:00 | پیمان جبارزاده گنجه [65%]; امیرکیوان محتشمی [75%] |  |  |  |  |
| 23 | 2.1.3 | فاز سوم |  | 1.5h | 2018-03-10 09:00 A | 2018-03-10 10:30 A |  | 100% | start no earlier than 2018-03-10 08:00 | امیرکیوان محتشمی [75%] | 1.13h | 1.13h | 689,625 | 689,625 |
| 24 | 2.1.4 | فاز چهارم |  | 1.5h | 2018-03-10 09:00 A | 2018-03-10 10:30 A |  | 100% | start no earlier than 2018-03-10 08:00 | پیمان جبارزاده گنجه [65%] | 0.98h | 0.98h | 536,250 | 536,250 |
| 25 | 2.1.5 | فاز پنجم |  | 1h | 2018-03-10 09:00 A | 2018-03-10 10:00 A |  | 100% | start no earlier than 2018-03-10 08:00 | امیرکیوان محتشمی [75%]; پیمان جبارزاده گنجه [65%] | 1.4h | 1.4h | 817,250 | 817,250 |
| 26 | 2.2 | ارسال نسخه اولیه | milestone | 0d | 2018-03-10 10:30 A | 2018-03-10 10:30 A | 20 | 100% |  | پیمان جبارزاده گنجه [65%] |  |  |  |  |

| ID | WBS | Task | Type | Duration | Start | Finish | Predecessors | Complete | Remaining | Total slack | Free slack | Constraint | Resources | Work | Actual work | Cost | Actual cost |
| --- | --- | --- | --- | --- | --- | --- | --- | --- | --- | --- | --- | --- | --- | --- | --- | --- | --- |
| 27 | 3 | **فاز سوم پروژه** |  | 4.67d? | 2018-04-23 08:00 A | 2018-04-30 17:00 | 19 | 25% | 3.5d? | 85d | 2d |  |  | 33.6h | 8.4h | 19,614,000 | 4,903,500 |
| 28 | 3.1 | **موارد کاربری و سناریوهای تست کیف پول** |  | 4.33d | 2018-04-23 08:00 A | 2018-04-28 15:00 |  | 50% | 2.17d | 85.33d |  |  |  | 16.8h | 8.4h | 9,807,000 | 4,903,500 |
| 29 | 3.1.1 | موارد کاربری مربوط به مبادلات ارزی |  | 1d | 2018-04-23 08:00 A | 2018-04-23 15:00 A |  | 100% |  |  |  | start no earlier than 2018-04-23 08:00 | پیمان جبارزاده گنجه [65%] | 3.9h | 3.9h | 2,145,000 | 2,145,000 |
| 30 | 3.1.2 | سناریوهای تست مربوط به مبادلات ارزی |  | 1d | 2018-04-28 08:00 | 2018-04-28 15:00 | 29 |  |  | 85.33d |  | start no earlier than 2018-04-28 08:00 | امیرکیوان محتشمی [75%] | 4.5h |  | 2,758,500 |  |
| 31 | 3.1.3 | موارد کاربری مربوط به شارژ ریالی |  | 1d | 2018-04-23 08:00 A | 2018-04-23 15:00 A |  | 100% |  |  |  | start no earlier than 2018-04-23 08:00 | امیرکیوان محتشمی [75%] | 4.5h | 4.5h | 2,758,500 | 2,758,500 |
| 32 | 3.1.4 | سناریوهای تست مربوط به شارژ ریالی |  | 1d | 2018-04-28 08:00 | 2018-04-28 15:00 | 31 |  |  | 85.33d |  | start no earlier than 2018-04-28 08:00 | پیمان جبارزاده گنجه [65%] | 3.9h |  | 2,145,000 |  |
| 33 | 3.2 | **موارد کاربری و سناریوهای تست مرتبط با ثبت‌نام کاربران** |  | 2d? | 2018-04-25 09:00 | 2018-04-26 17:00 |  |  |  | 86.33d |  |  |  | 8.4h |  | 4,903,500 |  |
| 34 | 3.2.1 | موارد کاربری ثبت‌نام کاربران |  | 1d? | 2018-04-25 09:00 | 2018-04-25 17:00 |  |  |  | 86.33d | 0d | start no earlier than 2018-04-25 08:00 | پیمان جبارزاده گنجه [65%] | 3.9h |  | 2,145,000 |  |
| 35 | 3.2.2 | سناریوهای تست ثبت‌نام کاربران |  | 1d? | 2018-04-26 09:00 | 2018-04-26 17:00 | 34 |  |  | 86.33d |  |  | امیرکیوان محتشمی [75%] | 4.5h |  | 2,758,500 |  |
| 36 | 3.3 | **موارد کاربری و سناریوهای مرتبط با ارتباط با مدیر** |  | 2d? | 2018-04-25 09:00 | 2018-04-26 17:00 |  |  |  | 86.33d |  |  |  | 8.4h |  | 4,903,500 |  |
| 37 | 3.3.1 | موارد کاربری ارتباط با مدیر |  | 1d? | 2018-04-25 09:00 | 2018-04-25 17:00 |  |  |  | 86.33d | 0d | start no earlier than 2018-04-25 08:00 | امیرکیوان محتشمی [75%] | 4.5h |  | 2,758,500 |  |
| 38 | 3.3.2 | سناریوهای تست ارتباط با مدیر |  | 1d? | 2018-04-26 09:00 | 2018-04-26 17:00 | 37 |  |  | 86.33d |  |  | پیمان جبارزاده گنجه [65%] | 3.9h |  | 2,145,000 |  |
| 39 | 3.4 | ارسال نسخه نهایی | milestone | 0d | 2018-04-30 17:00 | 2018-04-30 17:00 |  |  |  | 85d |  | finish no earlier than 2018-04-30 17:00 | پیمان جبارزاده گنجه [65%] |  |  |  |  |
| 40 | 4 | **فاز چهارم پروژه** |  | 24d | 2018-05-09 09:00 | 2018-06-13 08:00 | 27 |  |  | 64d | 7d |  |  | 79.8h |  | 46,583,250 |  |
| 41 | 4.1 | **موارد کاربری و سناریوهای تست مرتبط با تعریف و پیگیری درخواست** |  | 4d | 2018-05-09 09:00 | 2018-05-17 17:00 |  |  |  | 81d | 13d |  |  | 25.2h |  | 14,710,500 |  |
| 42 | 4.1.1 | موارد کاربری مربوط به ثبت درخواست |  | 1d | 2018-05-09 09:00 | 2018-05-09 17:00 |  |  |  | 83d | 0d | start no earlier than 2018-05-09 08:00 | پیمان جبارزاده گنجه [65%] | 3.9h |  | 2,145,000 |  |
| 43 | 4.1.2 | سناریوهای تست مربوط به ثبت درخواست |  | 1d | 2018-05-10 09:00 | 2018-05-10 17:00 | 42 |  |  | 83d |  |  | امیرکیوان محتشمی [75%] | 4.5h |  | 2,758,500 |  |
| 44 | 4.1.3 | موارد کاربری تعریف درخواست |  | 1d | 2018-05-09 09:00 | 2018-05-09 17:00 |  |  |  | 83d | 0d | start no earlier than 2018-05-09 08:00 | امیرکیوان محتشمی [75%] | 4.5h |  | 2,758,500 |  |
| 45 | 4.1.4 | سناریوهای تست تعریف درخواست |  | 1d | 2018-05-10 09:00 | 2018-05-10 17:00 | 44 |  |  | 83d |  | start no earlier than 2018-05-03 08:00 | پیمان جبارزاده گنجه [65%] | 3.9h |  | 2,145,000 |  |
| 46 | 4.1.5 | موارد کاربری پیگیری درخواست |  | 1d | 2018-05-16 09:00 | 2018-05-16 17:00 |  |  |  | 81d | 0d | start no earlier than 2018-05-16 08:00 | پیمان جبارزاده گنجه [65%] | 3.9h |  | 2,145,000 |  |
| 47 | 4.1.6 | سناریوهای تست پیگیری درخواست |  | 1d | 2018-05-17 09:00 | 2018-05-17 17:00 | 46 |  |  | 81d |  | start no earlier than 2018-05-10 08:00 | امیرکیوان محتشمی [75%] | 4.5h |  | 2,758,500 |  |
| 48 | 4.2 | **موارد کاربری و سناریوهای تست مرتبط با حساب شرکت** |  | 2d | 2018-05-16 09:00 | 2018-05-17 17:00 |  |  |  | 81d | 13d |  |  | 8.4h |  | 4,903,500 |  |
| 49 | 4.2.1 | موارد کاربری حساب شرکت |  | 1d | 2018-05-16 09:00 | 2018-05-16 17:00 |  |  |  | 81d | 0d | start no earlier than 2018-05-16 08:00 | امیرکیوان محتشمی [75%] | 4.5h |  | 2,758,500 |  |
| 50 | 4.2.2 | سناریوهای تست حساب شرکت |  | 1d | 2018-05-17 09:00 | 2018-05-17 17:00 | 49 |  |  | 81d |  | start no earlier than 2018-05-17 08:00 | پیمان جبارزاده گنجه [65%] | 3.9h |  | 2,145,000 |  |

| ID | WBS | Task | Type | Duration | Start | Finish | Predecessors | Total slack | Free slack | Constraint | Resources | Work | Cost |
| --- | --- | --- | --- | --- | --- | --- | --- | --- | --- | --- | --- | --- | --- |
| 51 | 4.3 | **موارد کاربری و سناریوهای تست مرتبط با اطلاع‌رسانی و صفحات ایستا** |  | 2d | 2018-05-23 09:00 | 2018-05-24 17:00 |  | 79d | 11d |  |  | 12.6h | 7,355,250 |
| 52 | 4.3.1 | موارد کابری صفحات ایستا |  | 0.5d | 2018-05-23 09:00 | 2018-05-23 12:00 |  | 80.5d |  | start no earlier than 2018-05-23 08:00 | پیمان جبارزاده گنجه [65%] | 1.95h | 1,072,500 |
| 53 | 4.3.2 | موارد کاربری اطلاع رسانی |  | 0.5d | 2018-05-23 09:00 | 2018-05-23 12:00 |  | 79.5d | 0.5d | start no earlier than 2018-05-23 08:00 | امیرکیوان محتشمی [75%] | 2.25h | 1,379,250 |
| 54 | 4.3.3 | سناریوهای تست اطلاع رسانی |  | 1d | 2018-05-24 09:00 | 2018-05-24 17:00 | 53 | 79d |  | start no earlier than 2018-05-24 08:00 | امیرکیوان محتشمی [75%]; پیمان جبارزاده گنجه [65%] | 8.4h | 4,903,500 |
| 55 | 4.4 | **موارد کاربری و سناریوهای تست مرتبط با کاربران** |  | 2d | 2018-05-30 09:00 | 2018-05-31 17:00 |  | 73d | 5d |  |  | 8.4h | 4,903,500 |
| 56 | 4.4.1 | موارد کاربری تغییر پروفایل |  | 0.5d | 2018-05-30 09:00 | 2018-05-30 12:00 |  | 74d | 0d | start no earlier than 2018-05-30 08:00 | پیمان جبارزاده گنجه [65%] | 1.95h | 1,072,500 |
| 57 | 4.4.2 | سناریوهای تست تغییر پروفایل |  | 0.5d | 2018-05-30 14:00 | 2018-05-30 17:00 | 56 | 74d |  | start no earlier than 2018-05-30 08:00 | پیمان جبارزاده گنجه [65%] | 1.95h | 1,072,500 |
| 58 | 4.4.3 | موارد کاربری دسترسی کاربران |  | 0.5d | 2018-05-31 09:00 | 2018-05-31 12:00 |  | 73d | 0d | start no earlier than 2018-05-31 08:00 | امیرکیوان محتشمی [75%] | 2.25h | 1,379,250 |
| 59 | 4.4.4 | سناریوهای تست دسترسی کابران |  | 0.5d | 2018-05-31 14:00 | 2018-05-31 17:00 | 58 | 73d |  | start no earlier than 2018-05-31 08:00 | امیرکیوان محتشمی [75%] | 2.25h | 1,379,250 |
| 60 | 4.5 | تکمیل موارد کاربری و سناریوهای تست‌ |  | 3d | 2018-06-06 09:00 | 2018-06-08 17:00 | 41, 48, 51, 55 | 68d | 4d | start no earlier than 2018-06-06 08:00 | امیرکیوان محتشمی [75%]; پیمان جبارزاده گنجه [65%] | 25.2h | 14,710,500 |
| 61 | 4.6 | ارسال نسخه نهایی | milestone | 0d | 2018-06-13 08:00 | 2018-06-13 08:00 | 60 | 64d |  | start no earlier than 2018-06-13 08:00 | پیمان جبارزاده گنجه [65%] |  |  |
| 62 | 5 | **فاز پنجم پروژه** |  | 64d | 2018-06-20 09:00 | 2018-08-23 08:00 | 40 | 0d |  |  |  | 155.4h | 90,714,750 |
| 63 | 5.1 | **ERD Design** |  | 1.5d | 2018-06-20 09:00 | 2018-06-21 12:00 |  | 62.5d |  |  |  | 8.4h | 4,903,500 |
| 64 | 5.1.1 | طراحی مدل‌های کاربران |  | 0.5d | 2018-06-20 09:00 | 2018-06-20 12:00 |  | 63.5d |  | start no earlier than 2018-06-20 08:00 | امیرکیوان محتشمی [75%] | 2.25h | 1,379,250 |
| 65 | 5.1.2 | طراحی مدل‌های مربوط به کیف پول |  | 0.5d | 2018-06-20 09:00 | 2018-06-20 12:00 |  | 63.5d |  | start no earlier than 2018-06-20 08:00 | پیمان جبارزاده گنجه [65%] | 1.95h | 1,072,500 |
| 66 | 5.1.3 | طراحی مدل‌های مربوط به درخواست‌ها |  | 0.5d | 2018-06-21 09:00 | 2018-06-21 12:00 |  | 62.5d |  | start no earlier than 2018-06-21 08:00 | پیمان جبارزاده گنجه [65%] | 1.95h | 1,072,500 |
| 67 | 5.1.4 | طراحی مدل‌های مربوط به اطلاع‌رسانی و سایر امکانات |  | 0.5d | 2018-06-21 09:00 | 2018-06-21 12:00 |  | 62.5d |  | start no earlier than 2018-06-21 08:00 | امیرکیوان محتشمی [75%] | 2.25h | 1,379,250 |
| 68 | 5.2 | **پیاده‌سازی کاربران** |  | 2d | 2018-06-27 09:00 | 2018-06-28 17:00 |  | 50d |  |  |  | 16.8h | 9,807,000 |
| 69 | 5.2.1 | ورود و ثبت‌نام کاربران |  | 2d | 2018-06-27 09:00 | 2018-06-28 17:00 |  | 50d | 8d | start no earlier than 2018-06-27 08:00 | امیرکیوان محتشمی [75%] | 9h | 5,517,000 |
| 70 | 5.2.2 | مدیریت کاربران |  | 2d | 2018-06-27 09:00 | 2018-06-28 17:00 |  | 55d |  | start no earlier than 2018-06-27 08:00 | پیمان جبارزاده گنجه [65%] | 7.8h | 4,290,000 |
| 71 | 5.3 | **پیاده‌سازی کیف پول و حساب شرکت** |  | 12d | 2018-07-07 09:00 | 2018-07-18 17:00 | 69 | 35d |  |  |  | 33.6h | 19,614,000 |
| 72 | 5.3.1 | نمایش کیف پول ها |  | 2d | 2018-07-07 09:00 | 2018-07-08 17:00 |  | 45d |  | start no earlier than 2018-07-07 08:00 | امیرکیوان محتشمی [75%] | 9h | 5,517,000 |
| 73 | 5.3.2 | شارژ ریالی با اتصال به درگاه بانکی |  | 2d | 2018-07-10 09:00 | 2018-07-11 17:00 |  | 42d |  | start no earlier than 2018-07-10 08:00 | پیمان جبارزاده گنجه [65%] | 7.8h | 4,290,000 |
| 74 | 5.3.3 | شارژ ناشناس |  | 2d | 2018-07-14 09:00 | 2018-07-15 17:00 |  | 38d |  | start no earlier than 2018-07-14 08:00 | امیرکیوان محتشمی [75%] | 9h | 5,517,000 |
| 75 | 5.3.4 | مبادله‌ی ارز |  | 2d | 2018-07-17 09:00 | 2018-07-18 17:00 |  | 35d |  | start no earlier than 2018-07-17 08:00 | پیمان جبارزاده گنجه [65%] | 7.8h | 4,290,000 |

| ID | WBS | Task | Type | Duration | Start | Finish | Predecessors | Total slack | Free slack | Constraint | Resources | Work | Cost |
| --- | --- | --- | --- | --- | --- | --- | --- | --- | --- | --- | --- | --- | --- |
| 76 | 5.4 | **پیاده‌سازی درخواست‌ها** |  | 9d | 2018-07-21 09:00 | 2018-07-29 17:00 | 69 | 24d |  |  |  | 42h | 24,517,500 |
| 77 | 5.4.1 | افزودن و ثبت درخواست |  | 2d | 2018-07-21 09:00 | 2018-07-22 17:00 |  | 28d | 0d | start no earlier than 2018-07-21 08:00 | امیرکیوان محتشمی [75%]; پیمان جبارزاده گنجه [65%] | 16.8h | 9,807,000 |
| 78 | 5.4.2 | پیگیری درخواست‌ها |  | 2d | 2018-07-23 09:00 | 2018-07-24 17:00 | 77 | 28d | 0d |  | پیمان جبارزاده گنجه [65%] | 7.8h | 4,290,000 |
| 79 | 5.4.3 | لغو خودکار درخواست‌ها در صورت رسیدگی نشدن |  | 1d | 2018-07-25 09:00 | 2018-07-25 17:00 | 78 | 28d |  |  | پیمان جبارزاده گنجه [65%] | 3.9h | 2,145,000 |
| 80 | 5.4.4 | اتصال سیستم ثبت درخواست به کیف پول و حساب شرکت |  | 3d | 2018-07-27 09:00 | 2018-07-29 17:00 |  | 24d |  | start no earlier than 2018-07-27 08:00 | امیرکیوان محتشمی [75%] | 13.5h | 8,275,500 |
| 81 | 5.5 | **پیاده‌سازی اطلاع‌رسانی و سایر امکانات** |  | 7d | 2018-07-30 09:00 | 2018-08-05 17:00 |  | 17d |  |  |  | 25.2h | 14,710,500 |
| 82 | 5.5.1 | پیاده‌سازی اطلاع‌رسانی |  | 3d | 2018-07-30 09:00 | 2018-08-01 17:00 |  | 21d |  | start no earlier than 2018-07-30 08:00 | پیمان جبارزاده گنجه [65%] | 11.7h | 6,435,000 |
| 83 | 5.5.2 | پیاده‌سازی صفحات ایستا |  | 3d | 2018-08-03 09:00 | 2018-08-05 17:00 |  | 17d |  | start no earlier than 2018-08-03 08:00 | امیرکیوان محتشمی [75%] | 13.5h | 8,275,500 |
| 84 | 5.6 | تکمیل پیاده‌سازی و تست |  | 3.5d | 2018-08-11 09:00 | 2018-08-14 12:00 |  | 8.5d |  | start no earlier than 2018-08-11 08:00 | امیرکیوان محتشمی [75%]; پیمان جبارزاده گنجه [65%] | 29.4h | 17,162,250 |
| 85 | 5.7 | ارسال نسخه نهایی | milestone | 0d | 2018-08-23 08:00 | 2018-08-23 08:00 | 84 | 0d |  | start no earlier than 2018-08-23 08:00 | امیرکیوان محتشمی [75%] |  |  |
